# 新咪表计划2014-10-20

Schedule from MS Project, 2014-10-20 to 2014-12-29.
微软中国

## Calendars

- 标准: Mon-Fri 08:00-12:00, 13:00-17:00; Sat-Sun off.

## Resources

| Resource |
| --- |
| 罗家国 |
| 刘浩 |
| 夏艳伟 |
| 产品组 |
| 郭勤 |
| 姚斌 |
| 易杰 |
| 许建辉 |
| 黄丛峰 |
| 软件组 |
| 工程部 |
| 硬件组 |
| 赵兴军 |
| 嵌入式组 |
| 0.5 工作日 |

## Schedule

| ID | WBS | Task | Type | Duration | Start | Finish | Predecessors | Total slack | Free slack | Constraint | Resources | Work |
| --- | --- | --- | --- | --- | --- | --- | --- | --- | --- | --- | --- | --- |
| 1 | 1 | **智能化新咪表** |  | 50.5d | 2014-10-20 | 2014-12-29 |  | 0d |  |  |  | 2452h |
| 2 | 1.1 | **硬件部分** |  | 30.5d | 2014-10-20 | 2014-12-01 |  | 0d |  |  |  | 636h |
| 3 | 1.1.1 | 嵌入式CPU选型 |  | 1d | 2014-10-20 | 2014-10-20 |  | 49.5d |  |  | 罗家国 | 8h |
| 4 | 1.1.2 | 硬件框图概要设计 |  | 1d | 2014-10-20 | 2014-10-20 |  | 0d |  | start no earlier than 2014-10-20 | 夏艳伟 | 8h |
| 5 | 1.1.3 | **重要元器件、各接口选型** |  | 1.5d | 2014-10-21 | 2014-10-22 | 4 | 0d |  |  | 夏艳伟; 罗家国 | 24h |
| 6 | 1.1.3.1 | 光感、温度、运动、门磁、震动等各类传感器 |  | 0.5d | 2014-10-21 | 2014-10-21 | 4 | 0d |  |  |  |  |
| 7 | 1.1.3.2 | 道闸、车位锁接口预留 |  | 0.5d | 2014-10-21 | 2014-10-21 | 6 | 0d |  |  |  |  |
| 8 | 1.1.3.3 | 语音模组选型 |  | 0.5d | 2014-10-22 | 2014-10-22 | 7 | 0d |  |  |  |  |
| 9 | 1.1.4 | **重要电路、模块仿真测试** |  | 7d | 2014-10-22 | 2014-10-31 |  | 0d |  |  |  | 208h |
| 10 | 1.1.4.1 | LCD显示屏高低温、强紫外线老化测试 |  | 7d | 2014-10-22 | 2014-10-31 | 8 | 0d |  |  | 工程部; 硬件组 | 112h |
| 11 | 1.1.4.2 | 语音模组测试 |  | 1d | 2014-10-22 | 2014-10-23 | 8 | 1d | 0d |  | 夏艳伟; 罗家国 | 16h |
| 12 | 1.1.4.3 | 各类传感器测试 |  | 5d | 2014-10-23 | 2014-10-30 | 11 | 1d |  |  | 硬件组; 工程部 | 80h |
| 13 | 1.1.5 | **重要样品模块、元器件采购** |  | 2.5d | 2014-10-31 | 2014-11-04 | 9 | 38.5d |  |  | 郭勤 | 20h |
| 14 | 1.1.5.1 | 三色LED、CPU、门磁开关、喇叭 |  | 0.5d | 2014-10-31 | 2014-10-31 | 12 | 38.5d | 0d |  |  |  |
| 15 | 1.1.5.2 | 光感传感器 |  | 0.5d | 2014-11-03 | 2014-11-03 | 14 | 38.5d | 0d |  |  |  |
| 16 | 1.1.5.3 | 温度传感器 |  | 0.5d | 2014-11-03 | 2014-11-03 | 15 | 38.5d | 0d |  |  |  |
| 17 | 1.1.5.4 | 运动传感器 |  | 0.5d | 2014-11-04 | 2014-11-04 | 16 | 38.5d | 0d |  |  |  |
| 18 | 1.1.5.5 | 语音模组 |  | 0.5d | 2014-11-04 | 2014-11-04 | 17 | 38.5d |  |  |  |  |
| 19 | 1.1.6 | 原理图设计 |  | 4.5d | 2014-10-31 | 2014-11-06 | 9 | 20d | 0d |  | 夏艳伟 | 36h |
| 20 | 1.1.7 | 原理图评审 | milestone | 0.5d | 2014-11-07 | 2014-11-07 | 19 | 20d | 0d |  | 产品组 | 4h |
| 21 | 1.1.8 | PCB绘制 |  | 5d | 2014-11-07 | 2014-11-14 | 20 | 20d | 0d |  | 夏艳伟 | 40h |
| 22 | 1.1.9 | PCB审核、与结构布局匹配核对 | milestone | 1d | 2014-11-14 | 2014-11-17 | 21 | 20d | 0d |  | 产品组 | 8h |
| 23 | 1.1.10 | BOM单制作、样品模块、元器件采购 |  | 5d | 2014-11-17 | 2014-11-24 | 22 | 20d | 0d |  | 夏艳伟; 郭勤 | 80h |
| 24 | 1.1.11 | 样板焊接、调试 | milestone | 5d | 2014-11-24 | 2014-12-01 | 23 | 20d |  |  | 夏艳伟; 罗家国; 工程部 | 120h |
| 25 | 1.1.12 | 太阳能充电模块设计 |  | 10d | 2014-10-31 | 2014-11-14 | 9 | 31d |  |  | 姚斌 | 80h |

| ID | WBS | Task | Type | Duration | Start | Finish | Predecessors | Total slack | Free slack | Constraint | Resources | Work |
| --- | --- | --- | --- | --- | --- | --- | --- | --- | --- | --- | --- | --- |
| 26 | 1.2 | **结构部分** |  | 39d | 2014-10-20 | 2014-12-11 |  | 11.5d |  |  | 赵兴军 | 312h |
| 27 | 1.2.1 | 方案设计 |  | 10d | 2014-10-20 | 2014-10-31 |  | 11.5d | 0d |  |  |  |
| 28 | 1.2.2 | 方案论证、评审 | milestone | 5d | 2014-11-03 | 2014-11-07 | 27 | 11.5d | 0d |  |  |  |
| 29 | 1.2.3 | 手版图纸整理 |  | 3d | 2014-11-10 | 2014-11-12 | 28 | 11.5d | 0d |  |  |  |
| 30 | 1.2.4 | 手版制作 |  | 15d | 2014-11-13 | 2014-12-03 | 29 | 11.5d | 0d |  |  |  |
| 31 | 1.2.5 | 样机安装 | milestone | 3d | 2014-12-04 | 2014-12-08 | 30 | 11.5d | 0d |  |  |  |
| 32 | 1.2.6 | 样机调试 |  | 3d | 2014-12-09 | 2014-12-11 | 31 | 11.5d |  |  |  |  |
| 33 | 1.3 | **软件通讯协议** |  | 2d | 2014-10-22 | 2014-10-24 | 8 | 15d | 5d |  | 罗家国 | 16h |
| 34 | 1.3.1 | 外网协议【在南海基础上完善】 |  | 1d | 2014-10-22 | 2014-10-23 | 8 | 15d | 0d | start no earlier than 2014-10-20 |  |  |
| 35 | 1.3.2 | 车检接收-咪表通讯协议 |  | 1d | 2014-10-23 | 2014-10-24 | 34 | 15d |  | start no earlier than 2014-10-20 |  |  |
| 36 | 1.4 | **软件部分** |  | 32d | 2014-10-31 | 2014-12-16 | 9 | 0d |  |  | 嵌入式组 | 1344h |
| 37 | 1.4.1 | **嵌入式程序** |  | 32d | 2014-10-31 | 2014-12-16 | 9 | 0d |  |  |  | 840h |
| 38 | 1.4.1.1 | **主流程、部分模块** |  | 32d | 2014-10-31 | 2014-12-16 | 9 | 0d |  |  | 罗家国 | 336h |
| 39 | 1.4.1.1.1 | 系统程序总体规划、流程图概要 |  | 3d | 2014-10-31 | 2014-11-05 | 9 | 0d |  |  |  |  |
| 40 | 1.4.1.1.2 | 系统内存分配、结构设计 |  | 1.5d | 2014-11-05 | 2014-11-06 | 39 | 0d |  |  |  |  |
| 41 | 1.4.1.1.3 | 系统流程图评审 | milestone | 0.5d | 2014-11-07 | 2014-11-07 | 40 | 0d |  |  |  |  |
| 42 | 1.4.1.1.4 | 按键程序、车位灯程序编写 |  | 0.5d | 2014-11-07 | 2014-11-07 | 41 | 0d |  |  |  |  |
| 43 | 1.4.1.1.5 | 显示程序整合 |  | 0.5d | 2014-11-10 | 2014-11-10 | 42 | 0d |  |  |  |  |
| 44 | 1.4.1.1.6 | 语音模块PWM程序、门检测程序编写 |  | 1d | 2014-11-10 | 2014-11-11 | 43 | 0d |  |  |  |  |
| 45 | 1.4.1.1.7 | 新CPU库的移植、熟悉 |  | 2d | 2014-11-11 | 2014-11-13 | 44 | 0d |  |  |  |  |
| 46 | 1.4.1.1.8 | 各个管理菜单、各功能编写 |  | 3d | 2014-11-13 | 2014-11-18 | 45 | 0d |  |  |  |  |
| 47 | 1.4.1.1.9 | 一卡通程序移植、库封装 |  | 1d | 2014-11-18 | 2014-11-19 | 46 | 0d |  |  |  |  |
| 48 | 1.4.1.1.10 | 银行卡模块程序移植、库封装 |  | 1d | 2014-11-19 | 2014-11-20 | 47 | 0d |  |  |  |  |
| 49 | 1.4.1.1.11 | 各传感器模块程序编程 | milestone | 5d | 2014-11-20 | 2014-11-27 | 48 | 0d |  |  |  |  |
| 50 | 1.4.1.1.12 | 费率编写 |  | 2d | 2014-11-27 | 2014-12-01 | 49 | 0d |  |  |  |  |
| 51 | 1.4.1.1.13 | 费率测试 |  | 5d | 2014-12-01 | 2014-12-08 | 50 | 0d |  |  | 罗家国; 工程部 | 80h |
| 52 | 1.4.1.1.14 | 车检器检测、PDA设置程序编写 |  | 3d | 2014-12-01 | 2014-12-04 | 50 | 9d | 0d |  |  |  |
| 53 | 1.4.1.1.15 | 记录发送、上传等系统内处理 |  | 2d | 2014-12-08 | 2014-12-10 | 51 | 0d |  |  |  |  |
| 54 | 1.4.1.1.16 | 主程序整体流程编写 |  | 1d | 2014-12-04 | 2014-12-05 | 52 | 9d | 0d |  |  |  |
| 55 | 1.4.1.1.17 | 主流程自测、完善 | milestone | 4d | 2014-12-10 | 2014-12-16 | 53 | 0d |  |  |  |  |
| 56 | 1.4.1.1.18 | U盘等IAP、ISP升级功能实现 |  | 7d | 2014-12-05 | 2014-12-16 | 54 | 9d |  |  |  |  |
| 57 | 1.4.1.2 | 2.4G接收模块、车检器程序编写 |  | 5d | 2014-11-11 | 2014-11-18 | 44 | 24d | 0d |  | 刘浩; 易杰 | 80h |
| 58 | 1.4.1.3 | PDA对咪表无线升级应用程序 |  | 5d | 2014-11-18 | 2014-11-25 | 57 | 24d |  |  | 罗家国; 刘浩; 易杰 | 120h |
| 59 | 1.4.1.4 | 显示程序库封装、调试 |  | 5d | 2014-10-31 | 2014-11-07 |  | 26d | 0d |  | 黄丛峰 | 40h |
| 60 | 1.4.1.5 | 3G模块程序库封装、调试 |  | 2d | 2014-11-07 | 2014-11-11 | 59 | 26d | 0d |  | 黄丛峰 | 16h |
| 61 | 1.4.1.6 | 银行卡模块程序编写、调试 |  | 8d | 2014-11-11 | 2014-11-21 | 60 | 26d |  |  | 黄丛峰 | 64h |
| 62 | 1.4.1.7 | 二维码扫描程序、支付程序 |  | 15d | 2014-11-10 | 2014-11-28 | 42 | 16.5d | 0d |  | 许建辉 | 120h |
| 63 | 1.4.1.8 | 二维码生成程序编写 |  | 4d | 2014-12-01 | 2014-12-04 | 62 | 16.5d |  |  | 许建辉; 软件组 | 64h |

| ID | WBS | Task | Type | Duration | Start | Finish | Predecessors | Total slack | Free slack | Constraint | Resources | Work |
| --- | --- | --- | --- | --- | --- | --- | --- | --- | --- | --- | --- | --- |
| 64 | 1.4.2 | **后台** |  | 31d | 2014-10-31 | 2014-12-15 | 33 | 10d |  |  | 软件组 | 248h |
| 65 | 1.4.2.1 | **记录收发** |  | 4d | 2014-10-31 | 2014-11-06 | 33 | 10d | 0d |  |  |  |
| 66 | 1.4.2.1.1 | 消费记录收发 |  | 2d | 2014-10-31 | 2014-11-04 | 33 | 10d | 0d | start no earlier than 2014-04-08 |  |  |
| 67 | 1.4.2.1.2 | 报警记录收发 |  | 2d | 2014-11-04 | 2014-11-06 | 66 | 10d |  | start no earlier than 2014-04-08 |  |  |
| 68 | 1.4.2.2 | 远程升级数据收发 |  | 5d | 2014-11-06 | 2014-11-13 | 65 | 10d | 0d | start no earlier than 2014-04-08 |  |  |
| 69 | 1.4.2.3 | 数据打包 |  | 2d | 2014-11-13 | 2014-11-17 | 68 | 10d | 0d | start no earlier than 2014-04-08 |  |  |
| 70 | 1.4.2.4 | 费率程序编写 |  | 5d | 2014-11-17 | 2014-11-24 | 69 | 10d | 0d | start no earlier than 2014-04-08 |  |  |
| 71 | 1.4.2.5 | 电子地图等 |  | 10d | 2014-11-24 | 2014-12-08 | 70 | 10d | 0d | start no earlier than 2014-04-08 |  |  |
| 72 | 1.4.2.6 | PDA上传数据解析、各报表编写 |  | 5d | 2014-12-08 | 2014-12-15 | 71 | 10d |  |  |  |  |
| 73 | 1.5 | **联调** |  | 4d | 2014-12-16 | 2014-12-22 |  | 0d |  |  |  | 64h |
| 74 | 1.5.1 | 咪表和车检器对接 |  | 2d | 2014-12-16 | 2014-12-18 | 55 | 0d |  |  | 刘浩; 罗家国 | 32h |
| 75 | 1.5.2 | 咪表和后台对接 |  | 2d | 2014-12-18 | 2014-12-22 | 74 | 0d |  |  | 罗家国; 软件组 | 32h |
| 76 | 1.6 | 整机测试 | milestone | 5d | 2014-12-22 | 2014-12-29 | 75 | 0d |  |  | 罗家国; 工程部 | 80h |
